# site_pseudo_code

Schedule from MS Project, 2015-09-07 to 2016-02-02, 7 hours a day.

## Calendars

- Standard: Mon-Fri 09:00-12:00, 14:00-18:00; Sat-Sun off.

## Resources

| Resource |
| --- |
| Mickaël |
| Come |
| Loïc |
| Alexis |
| Valentin |

## Schedule

| ID | Task | Type | Duration | Start | Finish | Predecessors | Total slack | Free slack | Constraint | Resources | Work |
| --- | --- | --- | --- | --- | --- | --- | --- | --- | --- | --- | --- |
| 1 | Début du Projet | milestone | 0d | 2015-09-07 | 2015-09-07 |  | 0d |  | start no earlier than 2015-09-07 |  |  |
| 2 | Création des comptes cloud & Réglages des Ordinateur |  | 1d | 2015-09-07 | 2015-09-07 | 1 | 0d |  |  | Alexis; Come; Loïc; Mickaël; Valentin | 35h |
| 3 | Interface/Design : Conception |  | 14d | 2015-09-17 | 2015-10-06 | 17 | 0d |  |  | Alexis; Mickaël | 196h |
| 4 | Interface/Design : Edition |  | 28d | 2015-10-07 | 2015-11-13 | 3 | 0d |  |  | Alexis; Mickaël | 392h |
| 5 | Site Web : Programmation |  | 14d | 2015-11-16 | 2015-12-03 | 4 | 0d |  |  | Alexis; Mickaël | 196h |
| 6 | Traducteur : Conception |  | 3d | 2015-09-08 | 2015-09-10 | 2 | 9d | 0d | start no earlier than 2015-05-05 | Loïc | 21h |
| 7 | Traducteur : Programmation |  | 21d | 2015-09-11 | 2015-10-09 | 6 | 9d | 0d |  | Loïc | 147h |
| 8 | Editeur de Structure : Conception |  | 5d | 2015-10-12 | 2015-10-16 | 7 | 9d | 0d |  | Loïc | 35h |
| 9 | Editeur de Structure : Programmation |  | 21d | 2015-10-19 | 2015-11-16 | 8 | 9d | 0d |  | Loïc | 147h |
| 10 | Intégration |  | 7d | 2015-12-24 | 2016-01-01 | 14, 15, 16 | 0d |  |  | Alexis; Come; Loïc; Mickaël; Valentin | 245h |
| 11 | Test |  | 7d | 2016-01-04 | 2016-01-12 | 10 | 0d |  |  | Alexis; Come; Loïc; Mickaël; Valentin | 245h |
| 12 | Corrections |  | 15d | 2016-01-13 | 2016-02-02 | 11 | 0d |  |  | Alexis; Come; Loïc; Mickaël; Valentin | 525h |
| 13 | Ecriture des scripts tutoriels et apprentissage |  | 14d | 2015-09-08 | 2015-09-25 | 2 | 92d |  |  | Come | 98h |
| 14 | Test Unitaire & Correction - SiteWeb |  | 14d | 2015-12-04 | 2015-12-23 | 5 | 0d |  |  | Come; Loïc; Valentin | 294h |
| 15 | Test Unitaire & Correction - Traducteur |  | 7d | 2015-10-12 | 2015-10-20 | 7 | 46d |  |  | Come; Valentin | 98h |
| 16 | Test Unitaire & Correction - Editeur de Structure |  | 7d | 2015-12-04 | 2015-12-14 | 9 | 7d |  |  | Alexis; Mickaël | 98h |
| 17 | Edition de la Base de Données |  | 7d | 2015-09-08 | 2015-09-16 | 2 | 0d |  |  | Valentin | 49h |
